Schedule from MS Project, 2017-03-15 to 2017-07-06, status date 2017-07-05, A marks actual dates.

## Calendars

- TI 2014: Mon-Fri 09:00-13:00, 15:00-19:00; Sat-Sun off. Exceptions (off unless hours are given): 2017-04-02 09:00-13:00, 15:00-19:00, 2017-04-08 09:00-13:00, 15:00-19:00, 2017-04-14 09:00-13:00, 15:00-19:00, 2017-05-01 (Día del Trabajo), 2017-05-06 09:00-13:00, 15:00-19:00, 2017-05-13 09:00-13:00, 15:00-19:00, 2017-05-21 (Día de las Glorias navales), 2017-06-15 09:00-13:00, 15:00-19:00, 2017-06-26 (San Pedro y San Pablo).

## Resources

| Resource |
| --- |
| cf |
| g |

## Schedule

| ID | WBS | Task | Type | Duration | Start | Finish | Predecessors | Complete | Remaining | Actual start | Baseline start | Baseline finish | Baseline duration | Total slack | Free slack | Constraint |
| --- | --- | --- | --- | --- | --- | --- | --- | --- | --- | --- | --- | --- | --- | --- | --- | --- |
| 1 | 1 | **Proyecto Nombre Año (Desarrollo)** |  | 84d? | 2017-03-15 A | 2017-07-06 |  | 36% | 53.39d? |  | 2013-01-01 | 2013-01-01 | 1d? | 0d |  |  |
| 2 | 1.1 | **SP Inicio** |  | 1d? | 2017-03-15 A | 2017-03-15 A |  | 100% |  |  | 2013-01-01 | 2013-01-01 | 1d? |  |  |  |
| 3 | 1.1.1 | Reunión de inicio de proyecto |  | 1d | 2017-03-15 A | 2017-03-15 A |  | 100% |  |  | 2017-03-15 | 2017-03-15 | 1d? |  |  | start no earlier than 2017-03-15 |
| 4 | 1.1.2 | Ingresar Ficha de Proyecto |  | 1d? | 2017-03-15 A | 2017-03-15 A |  | 100% |  |  | 2017-03-15 | 2017-03-15 | 1d? |  |  | start no earlier than 2017-03-15 |
| 5 | 1.2 | **SP Preparación/Planificación** |  | 7d | 2017-03-15 A | 2017-03-23 |  | 99% | 0d |  | 2017-03-15 | 2017-03-25 | 1d? | 77d |  |  |
| 6 | 1.2.1 | Completar Carta Gantt |  | 7d | 2017-03-15 A | 2017-03-23 A |  | 100% |  |  | 2013-01-01 | 2013-01-01 | 1d? |  |  | start no earlier than 2017-03-15 |
| 7 | 1.2.2 | Hito Aceptar Etapa Preparación / Planificación | milestone | 0d | 2017-03-15 | 2017-03-15 |  |  |  |  | 2013-01-01 | 2013-01-01 | 0d | 79d |  | start no earlier than 2017-03-15 |
| 8 | 1.3 | **SP Ejecución** |  | 74d? | 2017-03-15 A | 2017-06-21 |  | 35% | 48.01d? |  | 2013-01-01 | 2013-01-01 | 1d? | 10d |  |  |
| 9 | 1.3.1 | **TR Diseño / Arquitectura de la Aplicación** |  | 12d | 2017-03-15 A | 2017-03-30 |  | 96% | 0.53d |  | 2013-01-01 | 2013-01-01 | 1d? | 72d |  |  |
| 10 | 1.3.1.1 | Diseñar Diagrama de clases |  | 2d | 2017-03-22 A | 2017-03-23 |  | 80% | 0.4d |  | 2013-01-01 | 2013-01-01 | 1d? | 77d |  | start no earlier than 2017-03-22 |
| 11 | 1.3.1.2 | Diseñar Modelo de Datos |  | 7d | 2017-03-22 A | 2017-03-30 A |  | 100% |  |  | 2013-01-01 | 2013-01-01 | 1d? |  |  | start no earlier than 2017-03-22 |
| 12 | 1.3.1.3 | Hito Aceptar Etapa Diseño/Arquitectura | milestone | 0d | 2017-03-15 | 2017-03-15 |  |  |  |  | 2013-01-01 | 2013-01-01 | 0d | 84d |  | start no earlier than 2017-03-15 |
| 13 | 1.3.2 | **TR Diseño / Especificación Funcional por Módulo** |  | 27d? | 2017-03-15 A | 2017-04-18 |  | 89% | 3.04d? |  | 2013-01-01 | 2013-01-01 | 1d? | 57d |  |  |
| 14 | 1.3.2.1 | Generar y Presentar prototipo Módulo funcionario de farmacia |  | 4d | 2017-03-29 A | 2017-04-02 |  | 90% | 0.4d |  | 2013-01-01 | 2013-01-01 | 1d? | 4.6d | 1d | start no earlier than 2017-03-29 |
| 15 | 1.3.2.2 | Generar y Presentar prototipo Módulo de Medico |  | 4d? | 2017-04-04 A | 2017-04-07 | 14 | 90% | 0.4d? |  | 2013-01-01 | 2013-01-01 | 1d? | 3.2d | 0d | finish no earlier than 2017-04-07 |
| 16 | 1.3.2.3 | Generar y Presentar prototipo de Sistema |  | 4d? | 2017-04-08 A | 2017-04-12 | 15 | 80% | 0.8d? |  | 2013-01-01 | 2013-01-01 | 1d? | 3.8d | 0d | start no earlier than 2017-04-08 |
| 17 | 1.3.2.4 | Generar y Presentar prototipo Módulo de Generación de BD |  | 4d? | 2017-04-13 A | 2017-04-18 | 16 | 95% | 0.2d? |  | 2013-01-01 | 2013-01-01 | 1d? | 57d |  |  |
| 18 | 1.3.2.5 | Hito Aceptar Diseño Completo del Sistema | milestone | 0d | 2017-03-15 | 2017-03-15 |  |  |  |  | 2013-01-01 | 2013-01-01 | 0d | 84d |  | start no earlier than 2017-03-15 |
| 19 | 1.3.3 | **TR Desarrollo / Desarrollo Módulo de WEB en JAVA** |  | 50d | 2017-04-14 | 2017-06-21 |  | 11% | 44.44d | 2017-03-15 |  |  |  |  |  |  |
| 20 | 1.3.3.1 | Desarrollar Módulo de medico |  | 10d | 2017-04-11 A | 2017-04-24 |  | 30% | 7d |  | 2013-01-01 | 2013-01-01 | 0d | 36d | 0d | finish no earlier than 2017-04-24 |
| 21 | 1.3.3.2 | Prueba Interna Módulo de medico |  | 2d | 2017-04-25 | 2017-04-26 | 20 |  |  |  | 2013-01-01 | 2013-01-01 | 0d | 36d | 0d |  |
| 22 | 1.3.3.3 | Hito Aceptar Módulo de Medico | milestone | 0d | 2017-03-15 | 2017-03-15 |  |  |  |  | 2013-01-01 | 2013-01-01 | 0d | 84d |  | start no earlier than 2017-03-15 |
| 23 | 1.3.3.4 | Desarrollar Módulo de sistema |  | 10d | 2017-04-27 | 2017-05-10 | 21 |  |  |  | 2013-01-01 | 2013-01-01 | 0d | 36d | 2d |  |
| 24 | 1.3.3.5 | Desarrollar Validaciones |  | 3d | 2017-05-13 | 2017-05-16 | 23 |  |  |  | 2013-01-01 | 2013-01-01 | 0d | 34d | 0d | start no earlier than 2017-05-13 |
| 25 | 1.3.3.6 | Prueba Interna Validaciones |  | 2d | 2017-05-17 | 2017-05-18 | 24 |  |  |  | 2013-01-01 | 2013-01-01 | 0d | 34d |  |  |
| 26 | 1.3.3.7 | Hito Aceptar Validaciones | milestone | 0d | 2017-03-15 | 2017-03-15 |  |  |  |  | 2013-01-01 | 2013-01-01 | 0d | 84d |  | start no earlier than 2017-03-15 |

| ID | WBS | Task | Type | Duration | Start | Finish | Predecessors | Complete | Remaining | Actual start | Baseline start | Baseline finish | Baseline duration | Total slack | Free slack | Constraint |
| --- | --- | --- | --- | --- | --- | --- | --- | --- | --- | --- | --- | --- | --- | --- | --- | --- |
| 27 | 1.3.4 | **TR Desarrollo / Desarrollo Módulo de BD** |  | 13d | 2017-04-14 | 2017-05-03 |  |  |  |  |  |  |  |  |  |  |
| 28 | 1.3.4.1 | Desarrollar Módulo Generación de BD |  | 10d | 2017-04-14 | 2017-04-27 |  |  |  |  | 2013-01-01 | 2013-01-01 | 0d | 47d | 0d | start no earlier than 2017-04-14 |
| 29 | 1.3.4.2 | Prueba Interna Módulo Generación de BD |  | 3d | 2017-04-28 | 2017-05-03 | 28 |  |  |  | 2013-01-01 | 2013-01-01 | 0d | 47d |  |  |
| 30 | 1.3.4.3 | Hito Aceptar Módulo Generación de BD | milestone | 0d | 2017-03-15 | 2017-03-15 |  |  |  |  | 2013-01-01 | 2013-01-01 | 0d | 84d |  | start no earlier than 2017-03-15 |
| 31 | 1.3.5 | **TR Desarrollo / Desarrollo Módulo de escritorio en .NET** |  | 17d | 2017-04-14 | 2017-05-08 |  | 18% | 14d | 2017-03-15 | 2013-01-01 | 2013-01-01 | 1d? |  |  |  |
| 32 | 1.3.5.1 | Desarrollar Módulo de funcionario de farmacia |  | 10d | 2017-04-14 A | 2017-04-27 |  | 30% | 7d |  | 2013-01-01 | 2013-01-01 | 1d? | 43d | 0d | start no earlier than 2017-04-14 |
| 33 | 1.3.5.2 | Prueba Interna Módulo de funcionario de farmacia |  | 2d | 2017-04-28 | 2017-05-02 | 32 |  |  |  | 2013-01-01 | 2013-01-01 | 1d? | 43d | 0d |  |
| 34 | 1.3.5.3 | Hito Aceptar Módulo de Autenticación | milestone | 0d | 2017-03-15 | 2017-03-15 |  |  |  |  | 2013-01-01 | 2013-01-01 | 0d | 84d |  | start no earlier than 2017-03-15 |
| 35 | 1.3.5.4 | Desarrollar Validaciones |  | 3d | 2017-05-03 | 2017-05-05 | 33 |  |  |  | 2013-01-01 | 2013-01-01 | 1d? | 43d | 0d |  |
| 36 | 1.3.5.5 | Prueba Interna Validaciones |  | 2d | 2017-05-06 | 2017-05-08 | 35 |  |  |  | 2013-01-01 | 2013-01-01 | 1d? | 43d |  | start no earlier than 2017-05-06 |
| 37 | 1.3.5.6 | Hito Aceptar Validaciones | milestone | 0d | 2017-03-15 | 2017-03-15 |  |  |  |  | 2013-01-01 | 2013-01-01 | 0d | 84d |  | start no earlier than 2017-03-15 |
| 38 | 1.4 | **SP Seguimiento y Control** |  | 83d | 2017-03-15 A | 2017-07-05 |  | 20% | 66.4d |  | 2013-01-01 | 2013-01-01 | 1d? |  |  |  |
| 39 | 1.4.1 | **TR Entrega de Carta Gantt** |  | 83d | 2017-03-15 A | 2017-07-05 |  | 24% | 63.08d |  | 2013-01-01 | 2013-01-01 | 1d? |  |  |  |
| 40 | 1.4.1.1 | Entrega Gantt Mes Marzo |  | 1d? | 2017-03-15 A | 2017-03-15 A |  | 100% |  |  | 2013-01-01 | 2013-01-01 | 1d? |  |  | start no earlier than 2017-03-15 |
| 41 | 1.4.1.2 | Entrega Gantt Mes Abril |  | 1d? | 2017-04-12 A | 2017-04-12 |  | 20% | 0.8d? |  | 2013-01-01 | 2013-01-01 | 1d? | 61d |  | start no earlier than 2017-04-12 |
| 42 | 1.4.1.3 | Entrega Gantt Mes Mayo |  | 1d? | 2017-05-17 | 2017-05-17 |  |  |  |  | 2013-01-01 | 2013-01-01 | 1d? | 35d |  | start no earlier than 2017-05-17 |
| 43 | 1.4.1.4 | Entrega Gantt Mes Junio |  | 1d? | 2017-06-14 | 2017-06-14 |  |  |  |  | 2013-01-01 | 2013-01-01 | 1d? | 15d |  | start no earlier than 2017-06-14 |
| 44 | 1.4.1.5 | Entrega Gantt Mes Julio |  | 1d? | 2017-07-05 | 2017-07-05 |  |  |  |  | 2013-01-01 | 2013-01-01 | 1d? | 1d |  | start no earlier than 2017-07-05 |
| 45 | 1.4.2 | **TR Reuniones de Seguimientos con Cliente** |  | 12d? | 2017-03-15 | 2017-03-30 |  |  |  |  | 2013-01-01 | 2013-01-01 | 1d? |  |  |  |
| 46 | 1.4.2.1 | Reunión 1 |  | 1d? | 2017-03-30 | 2017-03-30 |  |  |  |  | 2017-03-29 | 2017-03-29 | 1d? | 72d |  | start no earlier than 2017-03-30 |
| 47 | 1.4.2.2 | Reunión 2 |  | 1d? | 2017-03-15 | 2017-03-15 |  |  |  |  | 2013-01-01 | 2013-01-01 | 1d? | 83d |  | start no earlier than 2017-03-15 |
| 48 | 1.4.2.3 | Reunión 3 |  | 1d? | 2017-03-15 | 2017-03-15 |  |  |  |  | 2013-01-01 | 2013-01-01 | 1d? | 83d |  | start no earlier than 2017-03-15 |
| 49 | 1.4.2.4 | Reunion 4 |  | 1d? | 2017-03-15 | 2017-03-15 |  |  |  |  |  |  |  | 83d |  |  |
| 50 | 1.4.2.5 | Reunion 5 |  | 1d? | 2017-03-15 | 2017-03-15 |  |  |  |  |  |  |  | 83d |  |  |

| ID | WBS | Task | Type | Duration | Start | Finish | Complete | Remaining | Baseline start | Baseline finish | Baseline duration | Total slack | Constraint |
| --- | --- | --- | --- | --- | --- | --- | --- | --- | --- | --- | --- | --- | --- |
| 51 | 1.4.3 | **TR Reuniones de Control Interno** |  | 78d | 2017-03-16 A | 2017-06-29 | 25% | 58.5d | 2013-01-01 | 2013-01-01 | 1d? |  |  |
| 52 | 1.4.3.1 | Reunión 1 |  | 1d? | 2017-03-16 A | 2017-03-16 A | 100% |  | 2013-01-01 | 2013-01-01 | 1d? |  | start no earlier than 2017-03-16 |
| 53 | 1.4.3.2 | Reunión 2 |  | 1d? | 2017-03-23 A | 2017-03-23 A | 100% |  |  |  |  |  | start no earlier than 2017-03-23 |
| 54 | 1.4.3.3 | Reunión 3 |  | 1d? | 2017-03-30 A | 2017-03-30 A | 100% |  |  |  |  |  | start no earlier than 2017-03-30 |
| 55 | 1.4.3.4 | Reunión 4 |  | 1d? | 2017-04-06 A | 2017-04-06 A | 100% |  |  |  |  |  | start no earlier than 2017-04-06 |
| 56 | 1.4.3.5 | Reunión 5 |  | 1d? | 2017-04-13 | 2017-04-13 |  |  |  |  |  | 60d | start no earlier than 2017-04-13 |
| 57 | 1.4.3.6 | Reunión 6 |  | 1d? | 2017-04-20 | 2017-04-20 |  |  |  |  |  | 55d | start no earlier than 2017-04-20 |
| 58 | 1.4.3.7 | Reunión 7 |  | 1d? | 2017-04-27 | 2017-04-27 |  |  |  |  |  | 50d | start no earlier than 2017-04-27 |
| 59 | 1.4.3.8 | Reunión 8 |  | 1d? | 2017-05-04 | 2017-05-04 |  |  |  |  |  | 46d | start no earlier than 2017-05-04 |
| 60 | 1.4.3.9 | Reunión 9 |  | 1d? | 2017-05-11 | 2017-05-11 |  |  |  |  |  | 40d | start no earlier than 2017-05-11 |
| 61 | 1.4.3.10 | Reunión 10 |  | 1d? | 2017-05-18 | 2017-05-18 |  |  |  |  |  | 34d | start no earlier than 2017-05-18 |
| 62 | 1.4.3.11 | Reunión 11 |  | 1d? | 2017-05-25 | 2017-05-25 |  |  |  |  |  | 29d | start no earlier than 2017-05-25 |
| 63 | 1.4.3.12 | Reunión 12 |  | 1d? | 2017-06-01 | 2017-06-01 |  |  | 2013-01-01 | 2013-01-01 | 1d? | 24d | start no earlier than 2017-06-01 |
| 64 | 1.4.3.13 | Reunión 13 |  | 1d? | 2017-06-08 | 2017-06-08 |  |  | 2013-01-01 | 2013-01-01 | 1d? | 19d | start no earlier than 2017-06-08 |
| 65 | 1.4.3.14 | Reunión 14 |  | 1d? | 2017-06-15 | 2017-06-15 |  |  |  |  |  | 14d | start no earlier than 2017-06-15 |
| 66 | 1.4.3.15 | Reunión 15 |  | 1d? | 2017-06-22 | 2017-06-22 |  |  |  |  |  | 9d | start no earlier than 2017-06-22 |
| 67 | 1.4.3.16 | Reunión 16 |  | 1d? | 2017-06-29 | 2017-06-29 |  |  | 2013-01-01 | 2013-01-01 | 1d? | 5d | start no earlier than 2017-06-29 |
| 68 | 1.5 | **SP Cierre** |  | 84d | 2017-03-15 | 2017-07-06 |  |  | 2013-01-01 | 2013-01-01 | 1d? |  |  |
| 69 | 1.5.1 | Hito Aceptación cierre completo del Sistema | milestone | 0d | 2017-03-15 | 2017-03-15 |  |  | 2013-01-01 | 2013-01-01 | 0d | 84d | start no earlier than 2017-03-15 |
| 70 | 1.5.2 | Entrega producto para resguardo de informática |  | 1d? | 2017-07-05 | 2017-07-05 |  |  | 2013-01-01 | 2013-01-01 | 1d? | 1d | finish no earlier than 2017-07-05 |
